# Sistema Integrado de Gestão Armamentista do 7ºBPM-PA

Schedule from ProjectLibre, 2022-11-14 to 2023-07-21.

## Calendars

- Padrão: Mon-Fri 08:00-12:00, 13:00-17:00; Sat-Sun off.

## Resources

| Resource | Rate | Cost per use |
| --- | --- | --- |
| Não atribuído |  |  |
| João Pedro | 12.8 |  |
| Paulo | 12.8 |  |
| Thiago | 20 |  |
| Josué | 40 |  |
| Renato | 25 |  |
| Coronel Alves |  |  |
| Energia | 500 | 4500 |
| Internet | 150 | 1350 |
| Notebook |  | 3800 |
| AppServ |  |  |
| VsCode |  |  |
| Git e GitHub |  |  |
| MySQL Workbench |  |  |
| HTML |  |  |
| PHP |  |  |
| Bootstrap |  |  |
| CSS |  |  |
| JS |  |  |
| Grunt |  |  |
| Assinatura Adobe Photoshop | 114 | 1026 |
| Assinatura Adobe Illustrator | 114 | 1026 |
| Canva |  |  |
| MySQL |  |  |
| Hospedagem | 28.9 | 260.1 |

## Schedule

| ID | WBS | Task | Duration | Start | Finish | Predecessors | Complete | Baseline start | Baseline finish | Constraint | Resources |
| --- | --- | --- | --- | --- | --- | --- | --- | --- | --- | --- | --- |
| 1 | 1 | **Desenvolvimento SysPM** | 180d | 2022-11-14 | 2023-07-21 |  | 54% | 2022-11-11 | 2023-06-13 |  | Internet; Energia; Notebook [300%] |
| 2 | 1.1 | **Definição do Projeto** | 30d | 2022-11-14 | 2022-12-23 |  | 100% | 2022-11-11 | 2022-12-19 |  |  |
| 3 | 1.1.1 | Apresentação da Ideia | 1d | 2022-11-14 | 2022-11-14 |  | 100% | 2022-11-11 | 2022-11-11 | start no earlier than 2022-11-12 | Coronel Alves [33%]; Renato [33%]; Josué [33%] |
| 4 | 1.1.2 | Organização da Ideia | 2d | 2022-11-15 | 2022-11-16 | 3 | 100% | 2022-11-14 | 2022-11-15 |  | João Pedro [17%]; Paulo [17%]; Thiago [17%]; Josué [17%]; Renato [17%]; Coronel Alves [17%] |
| 5 | 1.1.3 | **Análise Econômica** | 4d | 2022-11-17 | 2022-11-22 |  | 100% | 2022-11-16 | 2022-11-21 |  |  |
| 6 | 1.1.3.1 | Projeção de Custos, Despesas e Investimentos | 2d | 2022-11-17 | 2022-11-18 | 4 | 100% | 2022-11-16 | 2022-11-18 |  | Josué |
| 7 | 1.1.3.2 | **Análise Econômica com Indicadores** | 2d | 2022-11-21 | 2022-11-22 |  | 100% | 2022-11-18 | 2022-11-21 |  |  |
| 8 | 1.1.3.2.1 | Taxa Mínima de Atratividade - TMA | 2d | 2022-11-21 | 2022-11-22 | 6SS+2d | 100% | 2022-11-18 | 2022-11-21 |  | Josué |
| 9 | 1.1.3.2.2 | Valor Presente Líquido - VPL | 2d | 2022-11-21 | 2022-11-22 | 8 | 100% | 2022-11-18 | 2022-11-21 |  | Josué |
| 10 | 1.1.4 | **Planejamento e Análise de Requisitos** | 23d | 2022-11-23 | 2022-12-23 |  | 100% | 2022-11-22 | 2022-12-19 |  |  |
| 11 | 1.1.4.1 | Levantamento de RF e RNF | 2d | 2022-11-23 | 2022-11-24 | 9 | 100% | 2022-11-22 | 2022-11-23 |  | João Pedro; Paulo; Thiago; Josué; Coronel Alves |
| 12 | 1.1.4.2 | Análise dos Requisitos | 7d | 2022-11-25 | 2022-12-05 | 11 | 100% | 2022-11-24 | 2022-12-01 |  | João Pedro; Paulo; Thiago; Josué; Renato |
| 13 | 1.1.4.3 | Diagramação do Software | 5d | 2022-12-14 | 2022-12-20 | 12 | 100% | 2022-12-02 | 2022-12-08 | start no earlier than 2022-12-07 | Josué; MySQL Workbench |
| 14 | 1.1.4.4 | Definição das Ferramentas e Linguagens | 2d | 2022-12-14 | 2022-12-15 | 13 | 100% | 2022-12-09 | 2022-12-12 |  | Josué; João Pedro; Paulo; Thiago |
| 15 | 1.1.4.5 | Definição do Design do Software | 6d | 2022-12-16 | 2022-12-23 | 14 | 100% | 2022-12-13 | 2022-12-19 | start no earlier than 2022-12-16 | Assinatura Adobe Illustrator; Assinatura Adobe Photoshop; Grunt; Thiago; Canva |
| 16 | 1.2 | Apresentação do Projeto | 1d | 2022-12-26 | 2022-12-26 | 15 | 100% | 2022-12-20 | 2022-12-20 |  | Josué |
| 17 | 1.3 | **Implementação** | 108d | 2022-12-27 | 2023-05-25 |  | 81% | 2022-12-21 | 2023-04-17 |  | VsCode; Git e GitHub |
| 18 | 1.3.1 | **Desenvolvimento Backend** | 84d | 2022-12-27 | 2023-04-21 |  | 100% | 2022-12-21 | 2023-04-07 |  |  |
| 19 | 1.3.1.1 | Criação do Banco de Dados | 3d | 2022-12-27 | 2022-12-29 | 16 | 100% | 2022-12-21 | 2022-12-26 |  | AppServ; João Pedro; MySQL |
| 20 | 1.3.1.2 | Construção das Paginas, Tabelas e Formulários | 28d | 2022-12-30 | 2023-02-07 | 19 | 100% | 2022-12-27 | 2023-01-26 | start no earlier than 2022-03-17 | João Pedro; HTML; PHP; Bootstrap |
| 21 | 1.3.1.3 | Construção do CRUD | 40d | 2023-02-08 | 2023-04-04 | 20 | 100% | 2023-01-27 | 2023-03-23 |  | João Pedro; PHP |
| 22 | 1.3.1.4 | Elaboração dos Eventos de Geração de Documentos | 13d | 2023-04-05 | 2023-04-21 | 21 | 100% | 2023-03-24 | 2023-04-07 |  | João Pedro; HTML; PHP; Bootstrap |
| 23 | 1.3.2 | **Desenvolvimento Frontend** | 103d | 2023-01-03 | 2023-05-25 |  | 89% | 2022-12-29 | 2023-04-17 |  |  |
| 24 | 1.3.2.1 | Estilização das Páginas | 34d | 2023-01-03 | 2023-02-17 | 20SS+2d | 100% | 2022-12-29 | 2023-02-16 |  | Paulo; Bootstrap; CSS; HTML |
| 25 | 1.3.2.2 | Estilização dos Documentos | 15d | 2023-04-07 | 2023-04-27 | 22SS+2d | 80% | 2023-03-28 | 2023-04-17 |  | Paulo; Bootstrap; CSS; HTML |
| 26 | 1.3.2.3 | Programação de Interações JS das Páginas | 43d | 2023-04-07 | 2023-05-25 | 25FF, 24 | 80% | 2023-02-28 | 2023-04-17 |  | Paulo; HTML; JS |

Notes:
- 3: O Coronel teve que ir em operação no dia previsto.
- 6: Trabalho concluído antes do previsto.
- 12: Foi necessário mais tempo para uma melhor análise dos requisitos.
- 13: Início com atraso devido a demora na finalização da análise dos requisitos.
- 15: O designer precisou estudar melhor o Adobe Ilustrator devido à sua falta de conhecimento do mesmo.
- 19: O trabalho foi eficaz e rapidamente concluído!
- 20: Dia 12/03 o desenvolvedor João Pedro foi diagnosticado com Covid-19 e precisou ficar de repouso (5 dias), retornando assim aos trabalhos no dia 17/03.
- 22: Os desenvolvedores tiveram que fazer diversas correções durante a elaboração dos eventos.
- 24: O trabalho foi eficiente, rápido e concluído antes do previsto.

| ID | WBS | Task | Duration | Start | Finish | Predecessors | Baseline start | Baseline finish | Constraint | Resources |
| --- | --- | --- | --- | --- | --- | --- | --- | --- | --- | --- |
| 27 | 1.4 | **Testes** | 21d | 2023-05-26 | 2023-06-23 |  | 2023-04-18 | 2023-05-16 |  |  |
| 28 | 1.4.1 | **Testes Internos** | 13d | 2023-05-26 | 2023-06-13 |  | 2023-04-18 | 2023-05-04 |  |  |
| 29 | 1.4.1.1 | Teste com os Desenvolvedores | 5d | 2023-05-26 | 2023-06-01 | 26 | 2023-04-18 | 2023-04-24 |  | João Pedro; Paulo |
| 30 | 1.4.1.2 | Teste com o Analista | 8d | 2023-06-02 | 2023-06-13 | 29 | 2023-04-25 | 2023-05-04 | start no earlier than 2022-07-18 | Renato |
| 31 | 1.4.2 | **Teste Externo** | 8d | 2023-06-14 | 2023-06-23 |  | 2023-05-05 | 2023-05-16 |  |  |
| 32 | 1.4.2.1 | Teste de Usabilidade com o Usuário | 8d | 2023-06-14 | 2023-06-23 | 30 | 2023-05-05 | 2023-05-16 |  | Coronel Alves |
| 33 | 1.5 | **Implantação** | 20d | 2023-06-26 | 2023-07-21 |  | 2023-05-17 | 2023-06-13 |  |  |
| 34 | 1.5.1 | Disponibilização do Software | 2d | 2023-06-26 | 2023-06-27 | 32 | 2023-05-17 | 2023-05-18 |  | João Pedro; Paulo; Hospedagem |
| 35 | 1.5.2 | Documentação | 8d | 2023-06-28 | 2023-07-07 | 34 | 2023-05-19 | 2023-05-30 |  | João Pedro; Paulo; Josué |
| 36 | 1.5.3 | Treinamento | 10d | 2023-07-10 | 2023-07-21 | 35 | 2023-05-31 | 2023-06-13 |  | João Pedro; Paulo; Thiago; Josué |
| 37 | 2 | Conclusão | 0d | 2023-07-21 | 2023-07-21 | 36 | 2023-06-13 | 2023-06-13 |  |  |
